# Development breakdown_v02

Schedule from MS Project, 2016-04-02 to 2016-09-25, status date 2016-05-22, A marks actual dates.
Accenture

## Calendars

- Standard: Mon-Sun 08:00-12:00, 13:00-17:00.

## Schedule

| ID | WBS | Task | Type | Duration | Start | Finish | Predecessors | Complete | Remaining | Baseline start | Baseline finish | Baseline duration | Total slack | Free slack |
| --- | --- | --- | --- | --- | --- | --- | --- | --- | --- | --- | --- | --- | --- | --- |
| 1 | 1 | **Setup** |  | 27d | 2016-04-02 A | 2016-04-28 A |  | 100% |  | 2016-04-02 | 2016-04-28 | 27d |  |  |
| 2 | 1.1 | Server setup |  | 2d | 2016-04-02 A | 2016-04-03 A |  | 100% |  | 2016-04-02 | 2016-04-03 | 2d |  |  |
| 3 | 1.2 | **WP setup** |  | 20d | 2016-04-04 A | 2016-04-23 A |  | 100% |  | 2016-04-04 | 2016-04-23 | 20d |  |  |
| 4 | 1.2.1 | Establish WP structure |  | 1w | 2016-04-04 A | 2016-04-08 A | 2 | 100% |  | 2016-04-04 | 2016-04-08 | 1w |  |  |
| 5 | 1.2.2 | Create WP template |  | 2w | 2016-04-09 A | 2016-04-18 A | 4 | 100% |  | 2016-04-09 | 2016-04-18 | 2w |  |  |
| 6 | 1.2.3 | Create individual pages |  | 2w | 2016-04-09 A | 2016-04-18 A | 4 | 100% |  | 2016-04-09 | 2016-04-18 | 2w |  |  |
| 7 | 1.2.4 | **Add WP plugins** |  | 5d | 2016-04-19 A | 2016-04-23 A |  | 100% |  | 2016-04-19 | 2016-04-23 | 5d |  |  |
| 8 | 1.2.4.1 | Internal (slideshow, etc.) |  | 1w | 2016-04-19 A | 2016-04-23 A | 6 | 100% |  | 2016-04-19 | 2016-04-23 | 1w |  |  |
| 9 | 1.2.4.2 | External (twtr, etc.) |  | 1w | 2016-04-19 A | 2016-04-23 A | 6 | 100% |  | 2016-04-19 | 2016-04-23 | 1w |  |  |
| 10 | 1.3 | Code structure setup |  | 1w | 2016-04-24 A | 2016-04-28 A | 9 | 100% |  | 2016-04-24 | 2016-04-28 | 1w |  |  |
| 11 | 1.4 | Complete setup | milestone | 0d | 2016-04-28 A | 2016-04-28 A | 10 | 100% |  | 2016-04-28 | 2016-04-28 | 0d |  |  |
| 12 | 2 | **Coding** |  | 120d | 2016-04-29 A | 2016-08-26 |  | 17% | 100d | 2016-04-29 | 2016-08-26 | 120d | 30d |  |
| 13 | 2.1 | **Code for desktop** |  | 65d | 2016-04-29 A | 2016-07-02 |  | 31% | 44.69d | 2016-04-29 | 2016-07-02 | 65d | 1.25d |  |
| 14 | 2.1.1 | **HTML/CSS coding** |  | 55d | 2016-04-29 A | 2016-06-22 |  | 36% | 35.36d | 2016-04-29 | 2016-06-22 | 55d | 1.25d | 0d |
| 15 | 2.1.1.1 | Overall template (nav, footer, etc.) |  | 1w | 2016-04-29 A | 2016-05-03 A | 11 | 100% |  | 2016-04-29 | 2016-05-03 | 1w |  |  |
| 16 | 2.1.1.2 | **"news" page** |  | 10d | 2016-05-04 | 2016-05-13 |  |  |  | 2016-05-04 | 2016-05-13 | 10d | 11.25d |  |
| 17 | 2.1.1.2.1 | Index page |  | 1w | 2016-05-04 | 2016-05-08 | 15 |  |  | 2016-05-04 | 2016-05-08 | 1w | 11.25d | 0d |
| 18 | 2.1.1.2.2 | Permalink page |  | 1w | 2016-05-09 | 2016-05-13 | 17 |  |  | 2016-05-09 | 2016-05-13 | 1w | 11.25d | 0d |
| 19 | 2.1.1.3 | **"blog" page** |  | 15d | 2016-05-14 | 2016-05-28 |  |  |  | 2016-05-14 | 2016-05-28 | 15d | 11.25d |  |
| 20 | 2.1.1.3.1 | Index page |  | 2w | 2016-05-14 | 2016-05-23 | 18 |  |  | 2016-05-14 | 2016-05-23 | 2w | 11.25d | 0d |
| 21 | 2.1.1.3.2 | Permalink page |  | 1w | 2016-05-24 | 2016-05-28 | 20 |  |  | 2016-05-24 | 2016-05-28 | 1w | 11.25d | 0d |
| 22 | 2.1.1.4 | **"books" page** |  | 15d | 2016-05-29 | 2016-06-12 |  |  |  | 2016-05-29 | 2016-06-12 | 15d | 11.25d |  |
| 23 | 2.1.1.4.1 | Index page |  | 2w | 2016-05-29 | 2016-06-07 | 21 |  |  | 2016-05-29 | 2016-06-07 | 2w | 11.25d | 0d |
| 24 | 2.1.1.4.2 | Permalink page |  | 1w | 2016-06-08 | 2016-06-12 | 23 |  |  | 2016-06-08 | 2016-06-12 | 1w | 11.25d |  |
| 25 | 2.1.1.5 | bs.html |  | 1w | 2016-06-13 A | 2016-06-17 A | 24 | 100% |  | 2016-06-13 | 2016-06-17 | 1w |  |  |
| 26 | 2.1.1.6 | index.html |  | 1w | 2016-06-18 A | 2016-06-22 A | 25 | 100% |  | 2016-06-18 | 2016-06-22 | 1w |  |  |
| 27 | 2.1.1.7 | company.html |  | 1w | 2016-06-18 A | 2016-06-22 A | 25 | 100% |  | 2016-06-18 | 2016-06-22 | 1w |  |  |
| 28 | 2.1.1.8 | order.html |  | 1w | 2016-06-18 A | 2016-06-22 A | 25 | 100% |  | 2016-06-18 | 2016-06-22 | 1w |  |  |
| 29 | 2.1.1.9 | privacy.html |  | 1w | 2016-06-18 | 2016-06-22 | 25 |  |  | 2016-06-18 | 2016-06-22 | 1w | 1.25d |  |
| 30 | 2.1.2 | JavaScript coding |  | 2w | 2016-06-23 | 2016-07-02 | 14 |  |  | 2016-06-23 | 2016-07-02 | 2w | 1.25d | 0d |
| 31 | 2.1.3 | Complete desktop coding | milestone | 0d | 2016-07-02 | 2016-07-02 | 30 |  |  | 2016-07-02 | 2016-07-02 | 0d | 1.25d | 0d |

| ID | WBS | Task | Type | Duration | Start | Finish | Predecessors | Complete | Remaining | Baseline start | Baseline finish | Baseline duration | Total slack | Free slack |
| --- | --- | --- | --- | --- | --- | --- | --- | --- | --- | --- | --- | --- | --- | --- |
| 32 | 2.2 | **Code for mobile** |  | 55d | 2016-07-03 | 2016-08-26 |  |  |  | 2016-07-03 | 2016-08-26 | 55d | 1.25d |  |
| 33 | 2.2.1 | **HTML/CSS coding** |  | 45d | 2016-07-03 | 2016-08-16 |  |  |  | 2016-07-03 | 2016-08-16 | 45d | 1.25d |  |
| 34 | 2.2.1.1 | Overall template (nav, footer, etc.) |  | 1w | 2016-07-03 | 2016-07-07 | 31 |  |  | 2016-07-03 | 2016-07-07 | 1w | 1.25d | 0d |
| 35 | 2.2.1.2 | **"news" page** |  | 10d | 2016-07-08 | 2016-07-17 |  |  |  | 2016-07-08 | 2016-07-17 | 10d | 1.25d |  |
| 36 | 2.2.1.2.1 | Index page |  | 1w | 2016-07-08 | 2016-07-12 | 34 |  |  | 2016-07-08 | 2016-07-12 | 1w | 1.25d | 0d |
| 37 | 2.2.1.2.2 | Permalink page |  | 1w | 2016-07-13 | 2016-07-17 | 36 |  |  | 2016-07-13 | 2016-07-17 | 1w | 1.25d | 0d |
| 38 | 2.2.1.3 | **"blog" page** |  | 10d | 2016-07-18 | 2016-07-27 |  |  |  | 2016-07-18 | 2016-07-27 | 10d | 1.25d |  |
| 39 | 2.2.1.3.1 | Index page |  | 1w | 2016-07-18 | 2016-07-22 | 37 |  |  | 2016-07-18 | 2016-07-22 | 1w | 1.25d | 0d |
| 40 | 2.2.1.3.2 | Permalink page |  | 1w | 2016-07-23 | 2016-07-27 | 39 |  |  | 2016-07-23 | 2016-07-27 | 1w | 1.25d | 0d |
| 41 | 2.2.1.4 | **"books" page** |  | 10d | 2016-07-28 | 2016-08-06 |  |  |  | 2016-07-28 | 2016-08-06 | 10d | 1.25d |  |
| 42 | 2.2.1.4.1 | Index page |  | 1w | 2016-07-28 | 2016-08-01 | 40 |  |  | 2016-07-28 | 2016-08-01 | 1w | 1.25d | 0d |
| 43 | 2.2.1.4.2 | Permalink page |  | 1w | 2016-08-02 | 2016-08-06 | 42 |  |  | 2016-08-02 | 2016-08-06 | 1w | 1.25d | 0d |
| 44 | 2.2.1.5 | bs.html |  | 1w | 2016-08-07 | 2016-08-11 | 43 |  |  | 2016-08-07 | 2016-08-11 | 1w | 1.25d | 0d |
| 45 | 2.2.1.6 | index.html |  | 1w | 2016-08-12 | 2016-08-16 | 44 |  |  | 2016-08-12 | 2016-08-16 | 1w | 40d |  |
| 46 | 2.2.1.7 | company.html |  | 1w | 2016-08-12 | 2016-08-16 | 44 |  |  | 2016-08-12 | 2016-08-16 | 1w | 40d |  |
| 47 | 2.2.1.8 | order.html |  | 1w | 2016-08-12 | 2016-08-16 | 44 |  |  | 2016-08-12 | 2016-08-16 | 1w | 40d |  |
| 48 | 2.2.1.9 | privacy.html |  | 1w | 2016-08-12 | 2016-08-16 | 44 |  |  | 2016-08-12 | 2016-08-16 | 1w | 1.25d | 0d |
| 49 | 2.2.2 | JavaScript coding |  | 2w | 2016-08-17 | 2016-08-26 | 48 |  |  | 2016-08-17 | 2016-08-26 | 2w | 1.25d | 0d |
| 50 | 2.2.3 | Complete mobile coding | milestone | 0d | 2016-08-26 | 2016-08-26 | 49 |  |  | 2016-08-26 | 2016-08-26 | 0d | 1.25d | 0d |
| 51 | 3 | **Check & Adjust** |  | 25d | 2016-08-27 A | 2016-09-20 |  | 15% | 21.25d | 2016-08-27 | 2016-09-20 | 25d | 5d |  |
| 52 | 3.1 | **WP** |  | 10d | 2016-08-27 A | 2016-09-05 |  | 38% | 6.25d | 2016-08-27 | 2016-09-05 | 10d | 20d |  |
| 53 | 3.1.1 | Check WP functioning |  | 1w | 2016-08-27 A | 2016-08-31 | 50 | 25% | 0.75w | 2016-08-27 | 2016-08-31 | 1w | 1.25d | 0d |
| 54 | 3.1.2 | Adjust WP functioning |  | 1w | 2016-09-01 A | 2016-09-05 | 53 | 25% | 0.75w | 2016-09-01 | 2016-09-05 | 1w | 20d |  |
| 55 | 3.1.3 | Check plugin integration |  | 1w | 2016-08-27 A | 2016-08-31 | 50 | 50% | 0.5w | 2016-08-27 | 2016-08-31 | 1w | 25d |  |
| 56 | 3.1.4 | Adjust plugin integration |  | 1w | 2016-09-01 A | 2016-09-05 | 53 | 50% | 0.5w | 2016-09-01 | 2016-09-05 | 1w | 0d |  |

| ID | WBS | Task | Type | Duration | Start | Finish | Predecessors | Baseline start | Baseline finish | Baseline duration | Total slack |
| --- | --- | --- | --- | --- | --- | --- | --- | --- | --- | --- | --- |
| 57 | 3.2 | **Code** |  | 15d | 2016-09-06 | 2016-09-20 |  | 2016-09-06 | 2016-09-20 | 15d | 0d |
| 58 | 3.2.1 | Check website stability |  | 1w | 2016-09-06 | 2016-09-10 | 56 | 2016-09-06 | 2016-09-10 | 1w | 0d |
| 59 | 3.2.2 | Adjust website stability |  | 2w | 2016-09-11 | 2016-09-20 | 58 | 2016-09-11 | 2016-09-20 | 2w | 5d |
| 60 | 3.2.3 | Check responsive function |  | 1w | 2016-09-06 | 2016-09-10 | 56 | 2016-09-06 | 2016-09-10 | 1w | 15d |
| 61 | 3.2.4 | Adjust responsive function |  | 2w | 2016-09-11 | 2016-09-20 | 58 | 2016-09-11 | 2016-09-20 | 2w | 0d |
| 62 | 3.2.5 | Complete check | milestone | 0d | 2016-09-20 | 2016-09-20 | 61 | 2016-09-20 | 2016-09-20 | 0d | 0d |
| 63 | 4 | **Deploy** |  | 5d? | 2016-09-21 | 2016-09-25 |  | 2016-09-21 | 2016-09-25 | 5d? | 0d |
| 64 | 4.1 | Bundle package |  | 1w | 2016-09-21 | 2016-09-25 | 62 | 2016-09-21 | 2016-09-25 | 1w | 0d |
| 65 | 4.2 | Deploy package | milestone | 0d | 2016-09-25 | 2016-09-25 | 64 | 2016-09-25 | 2016-09-25 | 0d | 0d |
